# TOPR 1 - Project planning - Nov 2017 updated

Schedule from MS Project, 2017-09-25 to 2018-11-28, A marks actual dates.
Microsoft

## Calendars

- Standard: Mon-Fri 08:00-12:00, 13:00-17:00; Sat-Sun off.

## Schedule

| ID | WBS | Task | Type | Duration | Start | Finish | Predecessors | Complete | Remaining | Total slack | Constraint | Deadline |
| --- | --- | --- | --- | --- | --- | --- | --- | --- | --- | --- | --- | --- |
| 1 | 1 | **Task 1 - Meetings** |  | 299d | 2017-10-04 A | 2018-11-26 |  | 63% | 112.12d |  |  |  |
| 2 | 1.1 | **Task 1.1 - Kick-off meeting** |  | 3d | 2017-10-04 A | 2017-10-06 A |  | 100% |  |  |  |  |
| 3 | 1.1.1 | Conduct kick-off meeting | manual | 1d | 2017-10-04 A | 2017-10-04 A |  | 100% |  |  |  |  |
| 4 | 1.1.2 | Submit notes from kick-off meeting |  | 1d | 2017-10-06 A | 2017-10-06 A | 3FS+1d | 100% |  |  |  | 2017-10-11 |
| 5 | 1.2 | **Task 1.2 - Monthly meeting** |  | 286d | 2017-10-23 A | 2018-11-26 |  | 57% | 122.57d | 0d |  |  |
| 6 | 1.2.1 | **Conduct monthly meeting & submit notes** |  | 286d | 2017-10-23 A | 2018-11-26 |  | 57% | 122.57d | 0d |  |  |
| 7 | 1.2.1.1 | Conduct monthly meeting & submit notes 1 | manual | 1d | 2017-10-23 A | 2017-10-23 A |  | 100% |  |  | start no earlier than 2017-10-23 |  |
| 8 | 1.2.1.2 | Conduct monthly meeting & submit notes 2 | manual | 1d | 2017-11-27 A | 2017-11-27 A |  | 100% |  |  | start no earlier than 2017-11-27 |  |
| 9 | 1.2.1.3 | Conduct monthly meeting & submit notes 3 | manual | 1d | 2017-12-25 A | 2017-12-25 A |  | 100% |  |  | start no earlier than 2017-12-25 |  |
| 10 | 1.2.1.4 | Conduct monthly meeting & submit notes 4 | manual | 1d | 2018-01-22 A | 2018-01-22 A |  | 100% |  |  | start no earlier than 2018-01-22 |  |
| 11 | 1.2.1.5 | Conduct monthly meeting & submit notes 5 | manual | 1d | 2018-02-26 A | 2018-02-26 A |  | 100% |  |  | start no earlier than 2018-02-26 |  |
| 12 | 1.2.1.6 | Conduct monthly meeting & submit notes 6 | manual | 1d | 2018-03-26 A | 2018-03-26 A |  | 100% |  |  | start no earlier than 2018-03-26 |  |
| 13 | 1.2.1.7 | Conduct monthly meeting & submit notes 7 | manual | 1d | 2018-04-23 A | 2018-04-23 A |  | 100% |  |  | start no earlier than 2018-04-23 |  |
| 14 | 1.2.1.8 | Conduct monthly meeting & submit notes 8 | manual | 1d | 2018-05-28 A | 2018-05-28 A |  | 100% |  |  | start no earlier than 2018-05-28 |  |
| 15 | 1.2.1.9 | Conduct monthly meeting & submit notes 9 | manual | 1d | 2018-06-25 | 2018-06-25 |  |  |  |  | start no earlier than 2018-06-25 |  |
| 16 | 1.2.1.10 | Conduct monthly meeting & submit notes 10 | manual | 1d | 2018-07-23 | 2018-07-23 |  |  |  |  | start no earlier than 2018-07-23 |  |
| 17 | 1.2.1.11 | Conduct monthly meeting & submit notes 11 | manual | 1d | 2018-08-27 | 2018-08-27 |  |  |  |  | start no earlier than 2018-08-27 |  |
| 18 | 1.2.1.12 | Conduct monthly meeting & submit notes 12 | manual | 1d | 2018-09-24 | 2018-09-24 |  |  |  |  | start no earlier than 2018-09-24 |  |
| 19 | 1.2.1.13 | Conduct monthly meeting & submit notes 13 | manual | 1d | 2018-10-22 | 2018-10-22 |  |  |  |  | start no earlier than 2018-10-22 |  |
| 20 | 1.2.1.14 | Conduct monthly meeting & submit notes 14 | manual | 1d | 2018-11-26 | 2018-11-26 |  |  |  |  | start no earlier than 2018-11-26 |  |
| 21 | 2 | **Task 2 - Data gap analysis** |  | 308d | 2017-09-25 A | 2018-11-28 |  | 65% | 107.6d | 0d |  |  |
| 22 | 2.1 | **Task 2.1 - Develop draft workplan** |  | 34d | 2017-09-25 A | 2017-11-09 A |  | 100% |  |  |  |  |
| 23 | 2.1.1 | Develop and submit a draft work plan and schedule | manual | 22d | 2017-09-25 A | 2017-10-24 A |  | 100% |  |  |  | 2017-10-24 |
| 24 | 2.1.2 | Submit final work plan and schedule |  | 12d | 2017-10-25 A | 2017-11-09 A | 23 | 100% |  |  |  | 2017-11-09 |

Notes:
- 1: This task consists of coordination, between the contract team, the COR, FHWA LTBP program staff, and state highway department personnel. The intention of this task is to coordinate efforts between the contractor team, state highway department stakeholders, and the LTBP program staff so that documentation collection under Task 2 can occur.
- 2: Task 1.1- The Contractor shall conduct a kickoff meeting to be held at the Contractor's headquarters or regional office. Participants shall include the CO, the COR, the Contractor's staff, and FHWA LTBP program staff. The kickoff meeting shall occur within 30 days of the effective date of the task order. The Contractor shall provide the COR with a written summary of the proceedings of the kickoff meeting within 7 days after the conclusion of the meeting.
- 5: Task 1.2- The Contractor shall meet monthly (conference call, or online/web meeting, with decisions on which type of meeting to be determined by the COR) with the COR and FHWA LTBP staff to discuss progress on this task order. These meetings shall be coordinated by the Contractor and shall be held on dates and at locations approved by the CO.R, and shall be held on or before the last day of each month. The contractor shall provide the COR with a written summary of the proceedings of all meetings convened under this task within 7 days after the conclusion of each such meeting. Any travel required by the Contractor under this task requires both inclusion in monthly travel plan as well as prior approval by the COR or CO.
- 21: Task 2 - Data Gap Analysis for (1) untreated bridge decks, (2) treated bridge decks, and (3) beam bearings for prestressed multi-girder and steel multi-girder bridge types and (4) deck joints for prestressed multi-girder, steel multi-girder, and cast in place concrete box girder bridge types. / This task consists of all efforts related to the performance of a data gap analysis for the following high priority bridge performance issues and bridge superstructure types as identified byprior LTBP efforts: (1) untreated bridge decks, (2) treated bridge decks, (3) bridge joints, and (4) bridge bearings (girders). Identified superstructure types include the following: (1) steel multi-girder bridges, (2) prestressed concrete multi-girder bridges, and (3) post-tensioned castin- place concrete box girders. The purpose of this data gap analysis is to determine if there are data that are not currently specified for collection within LTBP protocols but that should be considered for inclusion. In addition, this data gap analysis should also consider bridge selections that have already been made for untreated bridge deck clusters and corridors to ensure an adequate distribution of secondary variables for all clusters and corridors and to determine if there are any gaps associated with the bridge selections for clusters and corridors for the untreated bridge deck populations.

| ID | WBS | Task | Type | Duration | Start | Finish | Predecessors | Complete | Remaining | Total slack | Constraint |
| --- | --- | --- | --- | --- | --- | --- | --- | --- | --- | --- | --- |
| 25 | 2.2 | **Task 2.2 - Develop and submit draft summary of findings & recommendations** |  | 308d | 2017-09-25 A | 2018-11-28 |  | 63% | 112.52d | 0d |  |
| 26 | 2.2.1 | **Submit draft summary of findings and suggestions** |  | 265d | 2017-09-25 A | 2018-09-28 |  | 73% | 72.85d | 0d |  |
| 27 | 2.2.1.1 | Untreated Bridge Decks | manual | 131d | 2017-09-25 A | 2018-03-26 |  | 95% | 6.55d |  |  |
| 28 | 2.2.1.2 | Bridge Deck Joints | manual | 131d | 2017-09-25 A | 2018-03-26 |  | 95% | 6.55d |  |  |
| 29 | 2.2.1.3 | Bridge Bearings | manual | 82d | 2018-01-26 A | 2018-05-21 |  | 95% | 4.1d |  |  |
| 30 | 2.2.1.4 | Bridge Superstructure Types (3 total) | manual | 91d | 2018-03-23 A | 2018-07-27 |  | 60% | 36.4d |  |  |
| 31 | 2.2.1.5 | Treated Bridge Decks | manual | 91d | 2018-05-25 | 2018-09-28 |  |  |  |  |  |
| 32 | 2.2.2 | **Submit final summary of findings & recommendations** |  | 177d | 2018-03-27 A | 2018-11-28 |  | 42% | 103.27d | 0d |  |
| 33 | 2.2.2.1 | Untreated Bridge Decks |  | 44d | 2018-03-27 A | 2018-05-25 | 27 | 90% | 4.4d | 133d |  |
| 34 | 2.2.2.2 | Bridge Deck Joints |  | 44d | 2018-03-27 A | 2018-05-25 | 28 | 90% | 4.4d | 133d |  |
| 35 | 2.2.2.3 | Bridge Bearings |  | 43d | 2018-05-22 A | 2018-07-19 | 29 | 27% | 31.39d | 94d |  |
| 36 | 2.2.2.4 | Bridge Superstructure Types (3 total) |  | 44d | 2018-07-30 | 2018-09-27 | 30 |  |  | 44d |  |
| 37 | 2.2.2.5 | Treated Bridge Decks |  | 43d | 2018-10-01 | 2018-11-28 | 31 |  |  | 0d |  |
| 38 | 3 | **Task 3 - Communication** |  | 286d | 2017-10-23 A | 2018-11-26 |  | 56% | 127.11d | 0d |  |
| 39 | 3.1 | **Conduct monthly meetings** |  | 286d | 2017-10-23 A | 2018-11-26 |  | 57% | 122.57d | 0d |  |
| 40 | 3.1.1 | Conduct monthly meetings 1 | manual | 1d | 2017-10-23 A | 2017-10-23 A |  | 100% |  |  | start no earlier than 2017-10-23 |
| 41 | 3.1.2 | Conduct monthly meetings 2 | manual | 1d | 2017-11-27 A | 2017-11-27 A |  | 100% |  |  | start no earlier than 2017-11-27 |
| 42 | 3.1.3 | Conduct monthly meetings 3 | manual | 1d | 2017-12-25 A | 2017-12-25 A |  | 100% |  |  | start no earlier than 2017-12-25 |
| 43 | 3.1.4 | Conduct monthly meetings 4 | manual | 1d | 2018-01-22 A | 2018-01-22 A |  | 100% |  |  | start no earlier than 2018-01-22 |
| 44 | 3.1.5 | Conduct monthly meetings 5 | manual | 1d | 2018-02-26 A | 2018-02-26 A |  | 100% |  |  | start no earlier than 2018-02-26 |
| 45 | 3.1.6 | Conduct monthly meetings 6 | manual | 1d | 2018-03-26 A | 2018-03-26 A |  | 100% |  |  | start no earlier than 2018-03-26 |
| 46 | 3.1.7 | Conduct monthly meetings 7 | manual | 1d | 2018-04-23 A | 2018-04-23 A |  | 100% |  |  | start no earlier than 2018-04-23 |
| 47 | 3.1.8 | Conduct monthly meetings 8 | manual | 1d | 2018-05-28 A | 2018-05-28 A |  | 100% |  |  | start no earlier than 2018-05-28 |
| 48 | 3.1.9 | Conduct monthly meetings 9 | manual | 1d | 2018-06-25 | 2018-06-25 |  |  |  |  | start no earlier than 2018-06-25 |
| 49 | 3.1.10 | Conduct monthly meetings 10 | manual | 1d | 2018-07-23 | 2018-07-23 |  |  |  |  | start no earlier than 2018-07-23 |
| 50 | 3.1.11 | Conduct monthly meetings 11 | manual | 1d | 2018-08-27 | 2018-08-27 |  |  |  |  | start no earlier than 2018-08-27 |
| 51 | 3.1.12 | Conduct monthly meetings 12 | manual | 1d | 2018-09-24 | 2018-09-24 |  |  |  |  | start no earlier than 2018-09-24 |
| 52 | 3.1.13 | Conduct monthly meetings 13 | manual | 1d | 2018-10-22 | 2018-10-22 |  |  |  |  | start no earlier than 2018-10-22 |
| 53 | 3.1.14 | Conduct monthly meetings 14 | manual | 1d | 2018-11-26 | 2018-11-26 |  |  |  |  | start no earlier than 2018-11-26 |

| ID | WBS | Task | Type | Duration | Start | Finish | Complete | Remaining | Total slack | Constraint |
| --- | --- | --- | --- | --- | --- | --- | --- | --- | --- | --- |
| 54 | 3.2 | **Submit progress reports** |  | 262d | 2017-11-14 A | 2018-11-14 | 54% | 120.92d | 0d |  |
| 55 | 3.2.1 | Submit progress reports 1 | manual | 1d | 2017-11-14 A | 2017-11-14 A | 100% |  |  | start no earlier than 2017-11-14 |
| 56 | 3.2.2 | Submit progress reports 2 | manual | 1d | 2017-12-14 A | 2017-12-14 A | 100% |  |  | start no earlier than 2017-12-14 |
| 57 | 3.2.3 | Submit progress reports 3 | manual | 1d | 2018-01-14 A | 2018-01-14 A | 100% |  |  | start no earlier than 2018-01-14 |
| 58 | 3.2.4 | Submit progress reports 4 | manual | 1d | 2018-02-14 A | 2018-02-14 A | 100% |  |  | start no earlier than 2018-02-14 |
| 59 | 3.2.5 | Submit progress reports 5 | manual | 1d | 2018-03-14 A | 2018-03-14 A | 100% |  |  | start no earlier than 2018-03-14 |
| 60 | 3.2.6 | Submit progress reports 6 | manual | 1d | 2018-04-14 A | 2018-04-14 A | 100% |  |  | start no earlier than 2018-04-14 |
| 61 | 3.2.7 | Submit progress reports 7 | manual | 1d | 2018-05-14 A | 2018-05-14 A | 100% |  |  | start no earlier than 2018-05-14 |
| 62 | 3.2.8 | Submit progress reports 8 | manual | 1d | 2018-06-14 | 2018-06-14 |  |  |  | start no earlier than 2018-06-14 |
| 63 | 3.2.9 | Submit progress reports 9 | manual | 1d | 2018-07-14 | 2018-07-14 |  |  |  | start no earlier than 2018-07-14 |
| 64 | 3.2.10 | Submit progress reports 10 | manual | 1d | 2018-08-14 | 2018-08-14 |  |  |  | start no earlier than 2018-08-14 |
| 65 | 3.2.11 | Submit progress reports 11 | manual | 1d | 2018-09-14 | 2018-09-14 |  |  |  | start no earlier than 2018-09-14 |
| 66 | 3.2.12 | Submit progress reports 12 | manual | 1d | 2018-10-14 | 2018-10-14 |  |  |  | start no earlier than 2018-10-14 |
| 67 | 3.2.13 | Submit progress reports 13 | manual | 1d | 2018-11-14 | 2018-11-14 |  |  |  | start no earlier than 2018-11-14 |
