# TOPR 2 - Project planning - Jan 2018

Schedule from MS Project, 2017-09-25 to 2020-10-30, A marks actual dates.
Microsoft

## Calendars

- Standard: Mon-Fri 08:00-12:00, 13:00-17:00; Sat-Sun off.

## Schedule

| ID | WBS | Task | Type | Duration | Start | Finish | Predecessors | Complete | Remaining | Total slack | Constraint | Deadline |
| --- | --- | --- | --- | --- | --- | --- | --- | --- | --- | --- | --- | --- |
| 1 | 1 | **Task 1 - Meetings** |  | 779d | 2017-10-04 A | 2020-09-28 |  | 30% | 545.3d | 0d |  |  |
| 2 | 1.1 | **Task 1.1** |  | 3d | 2017-10-04 A | 2017-10-06 A |  | 100% |  |  |  |  |
| 3 | 1.1.1 | Conduct kick-off meeting | manual | 1d | 2017-10-04 A | 2017-10-04 A |  | 100% |  |  |  |  |
| 4 | 1.1.2 | Submit notes from kick-off meeting |  | 1d | 2017-10-06 A | 2017-10-06 A | 3FS+1d | 100% |  |  |  | 2017-10-11 |
| 5 | 1.2 | **Task 1.2** |  | 741d | 2017-11-27 A | 2020-09-28 |  | 22% | 576.33d | 0d |  |  |
| 6 | 1.2.1 | **Conduct bi-monthly meeting & submit notes** |  | 741d | 2017-11-27 A | 2020-09-28 |  | 22% | 576.33d | 0d |  |  |
| 7 | 1.2.1.1 | Conduct bi-monthly meeting & submit notes 1 | manual | 1d | 2017-11-27 A | 2017-11-27 A |  | 100% |  |  | start no earlier than 2017-11-27 |  |
| 8 | 1.2.1.2 | Conduct bi-monthly meeting & submit notes 2 | manual | 1d | 2018-01-22 A | 2018-01-22 A |  | 100% |  |  | start no earlier than 2018-01-22 |  |
| 9 | 1.2.1.3 | Conduct bi-monthly meeting & submit notes 3 | manual | 1d | 2018-03-26 A | 2018-03-26 A |  | 100% |  |  | start no earlier than 2018-03-26 |  |
| 10 | 1.2.1.4 | Conduct bi-monthly meeting & submit notes 4 | manual | 1d | 2018-05-28 A | 2018-05-28 A |  | 100% |  |  | start no earlier than 2018-05-28 |  |
| 11 | 1.2.1.5 | Conduct bi-monthly meeting & submit notes 5 | manual | 1d | 2018-07-23 | 2018-07-23 |  |  |  |  | start no earlier than 2018-07-23 |  |
| 12 | 1.2.1.6 | Conduct bi-monthly meeting & submit notes 6 | manual | 1d | 2018-09-24 | 2018-09-24 |  |  |  |  | start no earlier than 2018-09-24 |  |
| 13 | 1.2.1.7 | Conduct bi-monthly meeting & submit notes 7 | manual | 1d | 2018-11-26 | 2018-11-26 |  |  |  |  | start no earlier than 2018-11-26 |  |
| 14 | 1.2.1.8 | Conduct bi-monthly meeting & submit notes 8 | manual | 1d | 2019-01-28 | 2019-01-28 |  |  |  |  | start no earlier than 2019-01-28 |  |
| 15 | 1.2.1.9 | Conduct bi-monthly meeting & submit notes 9 | manual | 1d | 2019-03-25 | 2019-03-25 |  |  |  |  | start no earlier than 2019-03-25 |  |
| 16 | 1.2.1.10 | Conduct bi-monthly meeting & submit notes 10 | manual | 1d | 2019-05-27 | 2019-05-27 |  |  |  |  | start no earlier than 2019-05-27 |  |
| 17 | 1.2.1.11 | Conduct bi-monthly meeting & submit notes 11 | manual | 1d | 2019-07-22 | 2019-07-22 |  |  |  |  | start no earlier than 2019-07-22 |  |
| 18 | 1.2.1.12 | Conduct bi-monthly meeting & submit notes 12 | manual | 1d | 2019-09-23 | 2019-09-23 |  |  |  |  | start no earlier than 2019-09-23 |  |
| 19 | 1.2.1.13 | Conduct bi-monthly meeting & submit notes 13 | manual | 1d | 2019-11-25 | 2019-11-25 |  |  |  |  | start no earlier than 2019-11-25 |  |
| 20 | 1.2.1.14 | Conduct bi-monthly meeting & submit notes 14 | manual | 1d | 2020-01-27 | 2020-01-27 |  |  |  |  | start no earlier than 2020-01-27 |  |
| 21 | 1.2.1.15 | Conduct bi-monthly meeting & submit notes 15 | manual | 1d | 2020-03-23 | 2020-03-23 |  |  |  |  | start no earlier than 2020-03-23 |  |
| 22 | 1.2.1.16 | Conduct bi-monthly meeting & submit notes 16 | manual | 1d | 2020-05-25 | 2020-05-25 |  |  |  |  | start no earlier than 2020-05-25 |  |
| 23 | 1.2.1.17 | Conduct bi-monthly meeting & submit notes 17 | manual | 1d | 2020-07-27 | 2020-07-27 |  |  |  |  | start no earlier than 2020-07-27 |  |
| 24 | 1.2.1.18 | Conduct bi-monthly meeting & submit notes 18 | manual | 1d | 2020-09-28 | 2020-09-28 |  |  |  |  | start no earlier than 2020-09-28 |  |

Notes:
- 1: This task consists of coordination, between the contract team, the COR, FHWA LTBP program staff, and state highway department personnel. The intention of this task is to coordinate efforts between the contractor team, state highway department stakeholders, and the LTBP program staff so that documentation collection under Task 2 can occur.
- 2: Task 1.1- The Contractor shall conduct a kickoff meeting to be held at the Contractor's headquarters or regional office. Participants shall include the CO, the COR, the Contractor's staff, and FHWA LTBP program staff. The kickoff meeting shall occur within 30 days of the effective date of the task order. The Contractor shall provide the COR with a written summary of the proceedings of the kickoff meeting within 7 days after the conclusion of the meeting.
- 5: Task 1.2- The Contractor shall meet monthly (conference call, or online/web meeting, with decisions on which type of meeting to be determined by the COR) with the COR and FHWA LTBP staff to discuss progress on this task order. These meetings shall be coordinated by the Contractor and shall be held on dates and at locations approved by the CO.R, and shall be held on or before the last day of each month. The contractor shall provide the COR with a written summary of the proceedings of all meetings convened under this task within 7 days after the conclusion of each such meeting. Any travel required by the Contractor under this task requires both inclusion in monthly travel plan as well as prior approval by the COR or CO.

| ID | WBS | Task | Type | Duration | Start | Finish | Predecessors | Complete | Remaining | Total slack | Constraint | Deadline |
| --- | --- | --- | --- | --- | --- | --- | --- | --- | --- | --- | --- | --- |
| 25 | 2 | **Task 2 - Strategic research matrices** |  | 435d | 2017-09-25 A | 2019-05-24 |  | 42% | 253.25d | 0d |  |  |
| 26 | 2.1 | **Task 2.1 - Develop work plan and schedule** |  | 56d | 2017-09-25 A | 2017-12-11 A |  | 100% |  |  |  |  |
| 27 | 2.1.1 | Develop and submit a draft work plan and schedule | manual | 22d | 2017-09-25 A | 2017-10-24 A |  | 100% |  |  |  | 2017-10-24 |
| 28 | 2.1.2 | Submit final work plan and schedule | manual | 34d | 2017-10-25 A | 2017-12-11 A | 27 | 100% |  |  | finish no earlier than 2017-12-11 |  |
| 29 | 2.2 | **Task 2.2 - Develop framework for SRM** |  | 99d | 2017-12-12 A | 2018-04-27 A |  | 100% |  |  |  |  |
| 30 | 2.2.1 | Develop and submit a draft work plan and schedule | manual | 75d | 2017-12-12 A | 2018-03-26 A | 28 | 100% |  |  |  |  |
| 31 | 2.2.2 | Submit final work plan and schedule | manual | 24d | 2018-03-27 A | 2018-04-27 A | 30 | 100% |  |  |  |  |
| 32 | 2.3 | **Task 2.3 - Develop SRM** |  | 130d | 2018-04-30 A | 2018-10-26 |  | 21% | 103.25d | 0d |  |  |
| 33 | 2.3.1 | Develop and submit a draft of finalized SRM | manual | 107d | 2018-04-30 A | 2018-09-25 | 31 | 25% | 80.25d |  | finish no earlier than 2018-09-25 |  |
| 34 | 2.3.2 | Submit the finalized SRM | manual | 23d | 2018-09-26 | 2018-10-26 | 33 |  |  |  |  |  |
| 35 | 2.4 | **Task 2.3 - Finalize SRM** |  | 150d | 2018-10-29 | 2019-05-24 |  |  |  | 0d |  |  |
| 36 | 2.4.1 | Submit draft SRM analysis summary | manual | 106d | 2018-10-29 | 2019-03-25 | 34 |  |  |  |  |  |
| 37 | 2.4.2 | Submit final revised SRM | manual | 44d | 2019-03-26 | 2019-05-24 | 36 |  |  |  |  |  |
| 38 | 3 | **Task 3 - Training** |  | 56d? | 2017-09-25 A | 2017-12-11 |  | 40% | 33.4d? | 0d |  |  |
| 39 | 3.1 | Task 3.1 - Develop and submit draft outline of the training curriculum | manual | 23d | 2017-09-25 A | 2017-10-25 A |  | 100% |  |  |  |  |
| 40 | 3.2 | Task 3.2 -Develop and submit revised training materials and schedule | manual | 33d | 2017-10-26 | 2017-12-11 | 39 |  |  |  |  |  |
| 41 | 3.3 | Task 3.3 - Implement approved training curriculum | manual | 1d? | 2017-09-25 | 2017-09-25 |  |  |  |  |  |  |
| 42 | 4 | **Task 4 - Development of data collection protocols and RABIT-CE operations manual** |  | 131d | 2017-09-25 A | 2018-03-26 |  | 98% | 2.94d | 0d |  |  |
| 43 | 4.1 | **Task 4.1 - Develop work plan and schedule** |  | 56d | 2017-09-25 A | 2017-12-11 A |  | 100% |  |  |  |  |
| 44 | 4.1.1 | Develop and submit draft work plan and schedule | manual | 23d | 2017-09-25 A | 2017-10-25 A |  | 100% |  |  |  |  |
| 45 | 4.1.2 | Submit final work plan and schedule | manual | 33d | 2017-10-26 A | 2017-12-11 A | 44 | 100% |  |  |  |  |
| 46 | 4.2 | **Task 4.3 - Submit protocols and manuls** |  | 75d | 2017-12-12 A | 2018-03-26 |  | 97% | 2.1d | 0d |  |  |
| 47 | 4.2.1 | Submit draft LDM for treated bridges protocols | manual | 33d | 2017-12-12 A | 2018-01-25 A | 45 | 100% |  |  |  |  |
| 48 | 4.2.2 | Submit draft instumentation protocols | manual | 33d | 2017-12-12 A | 2018-01-25 A | 45 | 100% |  |  |  |  |
| 49 | 4.2.3 | Sumbit draft RABIT-CE manual | manual | 33d | 2017-12-12 A | 2018-01-25 A | 45 | 100% |  |  |  |  |
| 50 | 4.2.4 | Submit final LDM for treated bridges protocols | manual | 42d | 2018-01-26 A | 2018-03-26 | 47 | 95% | 2.1d |  |  |  |
| 51 | 4.2.5 | Submit final instumentation protocols | manual | 42d | 2018-01-26 A | 2018-03-26 | 48 | 95% | 2.1d |  |  |  |
| 52 | 4.2.6 | Sumbit final RABIT-CE manual | manual | 42d | 2018-01-26 A | 2018-03-26 | 49 | 95% | 2.1d |  |  |  |

Notes:
- 25: Task 2 - Data Gap Analysis for (1) untreated bridge decks, (2) treated bridge decks, and (3) beam bearings for prestressed multi-girder and steel multi-girder bridge types and (4) deck joints for prestressed multi-girder, steel multi-girder, and cast in place concrete box girder bridge types. / This task consists of all efforts related to the performance of a data gap analysis for the following high priority bridge performance issues and bridge superstructure types as identified byprior LTBP efforts: (1) untreated bridge decks, (2) treated bridge decks, (3) bridge joints, and (4) bridge bearings (girders). Identified superstructure types include the following: (1) steel multi-girder bridges, (2) prestressed concrete multi-girder bridges, and (3) post-tensioned castin- place concrete box girders. The purpose of this data gap analysis is to determine if there are data that are not currently specified for collection within LTBP protocols but that should be considered for inclusion. In addition, this data gap analysis should also consider bridge selections that have already been made for untreated bridge deck clusters and corridors to ensure an adequate distribution of secondary variables for all clusters and corridors and to determine if there are any gaps associated with the bridge selections for clusters and corridors for the untreated bridge deck populations.

| ID | WBS | Task | Type | Duration | Start | Finish | Complete | Remaining | Total slack | Constraint |
| --- | --- | --- | --- | --- | --- | --- | --- | --- | --- | --- |
| 53 | 5 | **Task 5 - Legacy Data Mining data extraction** |  | 131d | 2017-09-25 A | 2018-03-26 | 85% | 19.65d | 0d |  |
| 54 | 5.1 | Task 5.2 - Upload extracted data from LDM to Bridge Portal | manual | 131d | 2017-09-25 A | 2018-03-26 | 85% | 19.65d |  |  |
| 55 | 6 | **Task 6 - Organize, conduct, and participate in LTBP workshops and meetings** |  | 1d? | 2017-09-25 | 2017-09-25 |  |  | 0d |  |
| 56 | 6.1 | Draft workshop/meeting plan | manual | 1d? | 2017-09-25 | 2017-09-25 |  |  |  |  |
| 57 | 6.2 | Final workshop/meeting plan | manual | 1d? | 2017-09-25 | 2017-09-25 |  |  |  |  |
| 58 | 7 | **Task 7 - Publications, website, communications, and technical assistance** |  | 773d | 2017-11-15 A | 2020-10-30 | 19% | 628.76d | 0d |  |
| 59 | 7.1 | **Task 7.1 - Publications** |  | 556d | 2018-09-14 | 2020-10-30 |  |  | 0d |  |
| 60 | 7.1.1 | Submit draft annual list of publications, articles, preesrntations and reports (2018) | manual | 1d | 2018-09-14 | 2018-09-14 |  |  |  |  |
| 61 | 7.1.2 | Submit draft annual list of publications, articles, preesrntations and reports (2019) | manual | 1d | 2019-09-16 | 2019-09-16 |  |  |  |  |
| 62 | 7.1.3 | Submit draft annual list of publications, articles, preesrntations and reports (2020) | manual | 1d | 2020-09-15 | 2020-09-15 |  |  |  |  |
| 63 | 7.1.4 | Submit final annual list of publications, articles, preesrntations and reports (2018) | manual | 1d | 2018-10-30 | 2018-10-30 |  |  |  |  |
| 64 | 7.1.5 | Submit final annual list of publications, articles, preesrntations and reports (2019) | manual | 1d | 2019-10-30 | 2019-10-30 |  |  |  |  |
| 65 | 7.1.6 | Submit final annual list of publications, articles, preesrntations and reports (2020) | manual | 1d | 2020-10-30 | 2020-10-30 |  |  |  |  |
| 66 | 7.2 | **Task 7.3 - Technical Assisstance** |  | 523d | 2018-09-14 A | 2020-09-15 | 15% | 444.59d | 0d |  |
| 67 | 7.2.1 | Submit log of technical inquiry and response (2018) | manual | 1d | 2018-09-14 A | 2018-09-14 | 45% | 0.55d |  |  |
| 68 | 7.2.2 | Submit log of technical inquiry and response (2019) | manual | 1d | 2019-09-16 | 2019-09-16 |  |  |  |  |
| 69 | 7.2.3 | Submit log of technical inquiry and response (2020) | manual | 1d | 2020-09-15 | 2020-09-15 |  |  |  |  |
| 70 | 7.3 | **Task 7.4 - Communication** |  | 740d | 2017-11-15 A | 2020-09-15 | 21% | 582.55d | 0d |  |
| 71 | 7.3.1 | **Conduct quarterly meetings** |  | 716d | 2017-11-27 A | 2020-08-24 | 25% | 537d | 0d |  |
| 72 | 7.3.1.1 | Conduct quarterly meetings 1 | manual | 1d | 2017-11-27 A | 2017-11-27 A | 100% |  |  | start no earlier than 2017-11-27 |
| 73 | 7.3.1.2 | Conduct quarterly meetings 2 | manual | 1d | 2018-02-26 A | 2018-02-26 A | 100% |  |  | start no earlier than 2018-02-26 |
| 74 | 7.3.1.3 | Conduct quarterly meetings 3 | manual | 1d | 2018-05-28 A | 2018-05-28 A | 100% |  |  | start no earlier than 2018-05-28 |
| 75 | 7.3.1.4 | Conduct quarterly meetings 4 | manual | 1d | 2018-08-27 | 2018-08-27 |  |  |  | start no earlier than 2018-08-27 |
| 76 | 7.3.1.5 | Conduct quarterly meetings 5 | manual | 1d | 2018-11-26 | 2018-11-26 |  |  |  | start no earlier than 2018-11-26 |
| 77 | 7.3.1.6 | Conduct quarterly meetings 6 | manual | 1d | 2019-02-25 | 2019-02-25 |  |  |  | start no earlier than 2019-02-25 |
| 78 | 7.3.1.7 | Conduct quarterly meetings 7 | manual | 1d | 2019-05-27 | 2019-05-27 |  |  |  | start no earlier than 2019-05-27 |
| 79 | 7.3.1.8 | Conduct quarterly meetings 8 | manual | 1d | 2019-08-26 | 2019-08-26 |  |  |  | start no earlier than 2019-08-26 |
| 80 | 7.3.1.9 | Conduct quarterly meetings 9 | manual | 1d | 2019-11-25 | 2019-11-25 |  |  |  | start no earlier than 2019-11-25 |
| 81 | 7.3.1.10 | Conduct quarterly meetings 10 | manual | 1d | 2020-02-24 | 2020-02-24 |  |  |  | start no earlier than 2020-02-24 |
| 82 | 7.3.1.11 | Conduct quarterly meetings 11 | manual | 1d | 2020-05-25 | 2020-05-25 |  |  |  | start no earlier than 2020-05-25 |
| 83 | 7.3.1.12 | Conduct quarterly meetings 12 | manual | 1d | 2020-08-24 | 2020-08-24 |  |  |  | start no earlier than 2020-08-24 |

| ID | WBS | Task | Type | Duration | Start | Finish | Complete | Remaining | Total slack | Constraint |
| --- | --- | --- | --- | --- | --- | --- | --- | --- | --- | --- |
| 84 | 7.3.2 | **Submit progress reports** |  | 740d | 2017-11-15 A | 2020-09-15 | 20% | 592d | 0d |  |
| 85 | 7.3.2.1 | Submit progress reports 1 | manual | 1d | 2017-11-15 A | 2017-11-15 A | 100% |  |  | start no earlier than 2017-11-15 |
| 86 | 7.3.2.2 | Submit progress reports 2 | manual | 1d | 2017-12-15 A | 2017-12-15 A | 100% |  |  | start no earlier than 2017-12-15 |
| 87 | 7.3.2.3 | Submit progress reports 3 | manual | 1d | 2018-01-15 A | 2018-01-15 A | 100% |  |  | start no earlier than 2018-01-15 |
| 88 | 7.3.2.4 | Submit progress reports 4 | manual | 1d | 2018-02-15 A | 2018-02-15 A | 100% |  |  | start no earlier than 2018-02-15 |
| 89 | 7.3.2.5 | Submit progress reports 5 | manual | 1d | 2018-03-15 A | 2018-03-15 A | 100% |  |  | start no earlier than 2018-03-15 |
| 90 | 7.3.2.6 | Submit progress reports 6 | manual | 1d | 2018-04-15 A | 2018-04-15 A | 100% |  |  | start no earlier than 2018-04-15 |
| 91 | 7.3.2.7 | Submit progress reports 7 | manual | 1d | 2018-05-15 A | 2018-05-15 A | 100% |  |  | start no earlier than 2018-05-15 |
| 92 | 7.3.2.8 | Submit progress reports 8 | manual | 1d | 2018-06-15 | 2018-06-15 |  |  |  | start no earlier than 2018-06-15 |
| 93 | 7.3.2.9 | Submit progress reports 9 | manual | 1d | 2018-07-15 | 2018-07-15 |  |  |  | start no earlier than 2018-07-15 |
| 94 | 7.3.2.10 | Submit progress reports 10 | manual | 1d | 2018-08-15 | 2018-08-15 |  |  |  | start no earlier than 2018-08-15 |
| 95 | 7.3.2.11 | Submit progress reports 11 | manual | 1d | 2018-09-15 | 2018-09-15 |  |  |  | start no earlier than 2018-09-15 |
| 96 | 7.3.2.12 | Submit progress reports 12 | manual | 1d | 2018-10-15 | 2018-10-15 |  |  |  | start no earlier than 2018-10-15 |
| 97 | 7.3.2.13 | Submit progress reports 13 | manual | 1d | 2018-11-15 | 2018-11-15 |  |  |  | start no earlier than 2018-11-15 |
| 98 | 7.3.2.14 | Submit progress reports 14 | manual | 1d | 2018-12-15 | 2018-12-15 |  |  |  | start no earlier than 2018-12-15 |
| 99 | 7.3.2.15 | Submit progress reports 15 | manual | 1d | 2019-01-15 | 2019-01-15 |  |  |  | start no earlier than 2019-01-15 |
| 100 | 7.3.2.16 | Submit progress reports 16 | manual | 1d | 2019-02-15 | 2019-02-15 |  |  |  | start no earlier than 2019-02-15 |
| 101 | 7.3.2.17 | Submit progress reports 17 | manual | 1d | 2019-03-15 | 2019-03-15 |  |  |  | start no earlier than 2019-03-15 |
| 102 | 7.3.2.18 | Submit progress reports 18 | manual | 1d | 2019-04-15 | 2019-04-15 |  |  |  | start no earlier than 2019-04-15 |
| 103 | 7.3.2.19 | Submit progress reports 19 | manual | 1d | 2019-05-15 | 2019-05-15 |  |  |  | start no earlier than 2019-05-15 |
| 104 | 7.3.2.20 | Submit progress reports 20 | manual | 1d | 2019-06-15 | 2019-06-15 |  |  |  | start no earlier than 2019-06-15 |
| 105 | 7.3.2.21 | Submit progress reports 21 | manual | 1d | 2019-07-15 | 2019-07-15 |  |  |  | start no earlier than 2019-07-15 |
| 106 | 7.3.2.22 | Submit progress reports 22 | manual | 1d | 2019-08-15 | 2019-08-15 |  |  |  | start no earlier than 2019-08-15 |
| 107 | 7.3.2.23 | Submit progress reports 23 | manual | 1d | 2019-09-15 | 2019-09-15 |  |  |  | start no earlier than 2019-09-15 |
| 108 | 7.3.2.24 | Submit progress reports 24 | manual | 1d | 2019-10-15 | 2019-10-15 |  |  |  | start no earlier than 2019-10-15 |
| 109 | 7.3.2.25 | Submit progress reports 25 | manual | 1d | 2019-11-15 | 2019-11-15 |  |  |  | start no earlier than 2019-11-15 |
| 110 | 7.3.2.26 | Submit progress reports 26 | manual | 1d | 2019-12-15 | 2019-12-15 |  |  |  | start no earlier than 2019-12-15 |
| 111 | 7.3.2.27 | Submit progress reports 27 | manual | 1d | 2020-01-15 | 2020-01-15 |  |  |  | start no earlier than 2020-01-15 |
| 112 | 7.3.2.28 | Submit progress reports 28 | manual | 1d | 2020-02-15 | 2020-02-15 |  |  |  | start no earlier than 2020-02-15 |
| 113 | 7.3.2.29 | Submit progress reports 29 | manual | 1d | 2020-03-15 | 2020-03-15 |  |  |  | start no earlier than 2020-03-15 |
| 114 | 7.3.2.30 | Submit progress reports 30 | manual | 1d | 2020-04-15 | 2020-04-15 |  |  |  | start no earlier than 2020-04-15 |
| 115 | 7.3.2.31 | Submit progress reports 31 | manual | 1d | 2020-05-15 | 2020-05-15 |  |  |  | start no earlier than 2020-05-15 |
| 116 | 7.3.2.32 | Submit progress reports 32 | manual | 1d | 2020-06-15 | 2020-06-15 |  |  |  | start no earlier than 2020-06-15 |
| 117 | 7.3.2.33 | Submit progress reports 33 | manual | 1d | 2020-07-15 | 2020-07-15 |  |  |  | start no earlier than 2020-07-15 |
| 118 | 7.3.2.34 | Submit progress reports 34 | manual | 1d | 2020-08-15 | 2020-08-15 |  |  |  | start no earlier than 2020-08-15 |
| 119 | 7.3.2.35 | Submit progress reports 35 | manual | 1d | 2020-09-15 | 2020-09-15 |  |  |  | start no earlier than 2020-09-15 |
